# TaiCauTrucPlan

How a schedule from MS Project changed from version to version. A marks actual dates.

## Version 1 (saved 2020-11-12)

Note of the change: Commit Java log & plan

| ID | WBS | Task | Duration | Start | Finish | Predecessors | Complete | Total float | Constraint |
| --- | --- | --- | --- | --- | --- | --- | --- | --- | --- |
| 1 | 1 | **Lending Suite** | 50d | 2020-11-02 A | 2021-01-08 |  | 8% | 0d |  |
| 2 |  | Nghiên cứu BPM API | 5d | 2020-11-02 A | 2020-11-06 A |  | 100% |  |  |
| 3 | 1.2 | **Module Log** | 17d | 2020-11-09 A | 2020-12-01 |  | 4% | 28d |  |
| 4 | 1.2.1 | **Build Web Log** | 12d | 2020-11-09 A | 2020-11-24 |  | 6% | 0d |  |
| 5 | 1.2.1.1 | **Java API** | 4d | 2020-11-09 A | 2020-11-12 |  | 25% | 0d |  |
| 6 |  | Build các class call IBM REST API | 1d | 2020-11-09 A | 2020-11-09 A | 2 | 100% |  |  |
| 7 |  | Viết function call API | 1d | 2020-11-10 | 2020-11-10 | 6 |  | 0d |  |
| 8 |  | Handle 'Instance detail' | 1d | 2020-11-11 | 2020-11-11 | 6, 7 |  | 0d |  |
| 9 |  | Viết function insert db | 1d | 2020-11-12 | 2020-11-12 | 6, 7, 8 |  | 0d |  |
| 10 |  | Hoàn thành | 0d | 2020-11-12 | 2020-11-12 | 6FF, 7FF, 8FF, 9FF |  | 0d |  |
| 11 | 1.2.1.2 | **Store Proceduce** | 2d | 2020-11-13 | 2020-11-16 |  |  | 0d |  |
| 12 |  | SP insert từng table | 1d | 2020-11-13 | 2020-11-13 | 10 |  | 0d |  |
| 13 |  | SP insert theo transaction | 1d | 2020-11-16 | 2020-11-16 | 12 |  | 0d |  |
| 14 |  | Hoàn thành | 0d | 2020-11-16 | 2020-11-16 | 12FF, 13FF |  | 0d |  |
| 15 | 1.2.1.3 | **Schedule job pull instance** | 3d | 2020-11-17 | 2020-11-19 |  |  | 0d |  |
| 16 |  | Viết schedule job | 2d | 2020-11-17 | 2020-11-18 | 14 |  | 0d |  |
| 17 |  | Check performance api & db | 1d | 2020-11-19 | 2020-11-19 | 16 |  | 0d |  |
| 18 |  | Hoàn thành | 0d | 2020-11-19 | 2020-11-19 | 16FF, 17FF |  | 0d |  |
| 19 | 1.2.1.4 | **Viết lớp Communication (basic)** | 3d | 2020-11-20 | 2020-11-24 |  |  | 0d |  |
| 20 |  | Thiết kế kiến trúc | 2d | 2020-11-20 | 2020-11-23 | 18 |  | 0d |  |
| 21 |  | Send mail | 1d | 2020-11-24 | 2020-11-24 | 18, 20 |  | 0d |  |
| 22 |  | Send message to instance | 1d | 2020-11-24 | 2020-11-24 | 18, 20 |  | 0d |  |
| 23 |  | Hoàn thành | 0d | 2020-11-24 | 2020-11-24 | 21FF, 20FF, 22FF |  | 0d |  |
| 24 | 1.2.1.5 | **Viết giao diện web** | 5d | 2020-11-09 | 2020-11-13 |  |  | 7d |  |
| 25 | 1.2.1.5.1 | **Start web với Spring MVC** | 2d | 2020-11-09 | 2020-11-10 |  |  | 7d |  |
| 26 |  | Start Spring Boot | 1d | 2020-11-09 | 2020-11-09 | 2 |  | 7d |  |
| 27 |  | Tạo simple template | 1d | 2020-11-10 | 2020-11-10 | 26 |  | 7d |  |
| 28 |  | Hoàn thành | 0d | 2020-11-10 | 2020-11-10 | 26FF, 27FF |  | 7d |  |
| 29 | 1.2.1.5.2 | **Binding data** | 3d | 2020-11-11 | 2020-11-13 |  |  | 7d |  |
| 30 |  | Viết các function call java api | 1d | 2020-11-11 | 2020-11-11 | 28 |  | 7d |  |
| 31 |  | Mapping data to view | 1d | 2020-11-12 | 2020-11-12 | 30 |  | 7d |  |
| 32 |  | Test hoàn thiện | 1d | 2020-11-13 | 2020-11-13 | 30, 31 |  | 7d |  |
| 33 |  | Hoàn thành | 0d | 2020-11-13 | 2020-11-13 | 30FF, 31FF, 32FF |  | 7d |  |
| 34 |  | Hoàn thành | 0d | 2020-11-13 | 2020-11-13 | 28FF, 33FF |  | 7d |  |
| 35 |  | Hoàn thành | 0d | 2020-11-24 | 2020-11-24 | 10FF, 18FF, 23FF, 34FF |  | 0d |  |
| 36 | 1.2.2 | **Test & Fix bug** | 5d | 2020-11-25 | 2020-12-01 |  |  | 28d |  |
| 37 |  | Test & fix bug | 5d | 2020-11-25 | 2020-12-01 | 35 |  | 28d | start no earlier than 2020-11-23 |
| 38 |  | Hoàn thành | 0d | 2020-12-01 | 2020-12-01 | 37FF |  | 28d | start no earlier than 2020-11-23 |
| 39 |  | Hoàn thành | 0d | 2020-12-01 | 2020-12-01 | 35FF, 38FF |  | 28d |  |
| 40 | 1.3 | **Core API** | 17d | 2020-11-25 | 2020-12-17 |  |  | 0d |  |
| 41 | 1.3.1 | **Khảo sát nghiệp vụ và tìm BPM API** | 5d | 2020-11-25 | 2020-12-01 |  |  | 0d |  |
| 42 |  | Phân tích & Thiết kế nghiệp vụ "Khởi tạo nhanh" | 3d | 2020-11-25 | 2020-11-27 | 35 |  | 0d | start no earlier than 2020-11-23 |
| 43 |  | Tính số api function | 1d | 2020-11-25 | 2020-11-25 | 42SS |  | 2d |  |
| 44 |  | Tìm các BPM API cần dùng | 2d | 2020-11-30 | 2020-12-01 | 42, 43 |  | 0d |  |
| 45 |  | Hoàn thành | 0d | 2020-12-01 | 2020-12-01 | 42FF, 43FF, 44FF |  | 0d |  |
| 46 | 1.3.2 | **Khảo sát Spring framework** | 3d | 2020-12-02 | 2020-12-04 |  |  | 0d |  |
| 47 |  | Spring api | 1d | 2020-12-02 | 2020-12-02 | 45 |  | 0d |  |
| 48 |  | Spring security | 1d | 2020-12-03 | 2020-12-03 | 47 |  | 0d |  |
| 49 |  | Spring JMS | 1d | 2020-12-04 | 2020-12-04 | 48 |  | 0d |  |
| 50 |  | Hoàn thành | 0d | 2020-12-04 | 2020-12-04 | 47FF, 48FF, 49FF |  | 0d |  |
| 51 | 1.3.3 | **Sample triển khai Spring API, Sercurity, JMS** | 3d | 2020-12-07 | 2020-12-09 |  |  | 0d |  |
| 52 |  | Sample Spring API | 1d | 2020-12-07 | 2020-12-07 | 50 |  | 0d |  |
| 53 |  | Sample Spring Security | 1d | 2020-12-07 | 2020-12-07 | 52SS |  | 0d |  |
| 54 |  | Samle call API qua Spring Security | 1d | 2020-12-08 | 2020-12-08 | 52, 53 |  | 0d |  |
| 55 |  | Sample call API qua Spring JMS | 1d | 2020-12-09 | 2020-12-09 | 52, 53, 54 |  | 0d |  |
| 56 |  | Hoàn thành | 0d | 2020-12-09 | 2020-12-09 | 52FF, 53FF, 54FF, 55FF |  | 0d |  |
| 57 | 1.3.4 | **Triển khai Spring API** | 6d | 2020-12-10 | 2020-12-17 |  |  | 0d |  |
| 58 | 1.3.4.1 | **Build template** | 3d | 2020-12-10 | 2020-12-14 |  |  | 0d |  |
| 59 |  | Start REST API với Spring Boot | 1d | 2020-12-10 | 2020-12-10 | 56 |  | 0d |  |
| 60 |  | Thiết kế simple framework dạng class library | 1d | 2020-12-11 | 2020-12-11 | 59 |  | 0d |  |
| 61 |  | Viết các function dùng chung | 1d | 2020-12-14 | 2020-12-14 | 60 |  | 0d |  |
| 62 |  | Hoàn thành | 0d | 2020-12-14 | 2020-12-14 | 59FF, 60FF, 61FF |  | 0d |  |
| 63 |  | Triển khai function cho RLOS API | 2d | 2020-12-15 | 2020-12-16 | 62 |  | 0d |  |
| 64 |  | Unit Test | 1d | 2020-12-17 | 2020-12-17 | 63 |  | 0d |  |
| 65 |  | Hoàn thành | 0d | 2020-12-17 | 2020-12-17 | 62FF, 63FF, 64FF |  | 0d |  |
| 66 |  | Hoàn thành | 0d | 2020-12-17 | 2020-12-17 | 45FF, 50FF, 56FF, 65FF |  | 0d |  |
| 67 |  | Hoàn thành | 0d | 2020-12-17 | 2020-12-17 | 39FF, 66FF, 2 |  | 16d |  |
| 68 | 1.5 | **Tích hợp ODM** | 3d | 2020-11-13 | 2020-11-17 |  |  | 38d |  |
| 69 |  | Phân tích yêu cầu | 1d | 2020-11-13 | 2020-11-13 | 10 |  | 38d |  |
| 70 |  | Mapping BO | 2d | 2020-11-13 | 2020-11-16 | 69SS |  | 38d |  |

| ID | WBS | Task | Duration | Start | Finish | Predecessors | Total float |
| --- | --- | --- | --- | --- | --- | --- | --- |
| 71 |  | Call rule operation | 2d | 2020-11-13 | 2020-11-16 | 70SS | 38d |
| 72 |  | Test luồng gọi business rule | 1d | 2020-11-17 | 2020-11-17 | 70, 71, 69 | 38d |
| 73 |  | Hoàn thành | 0d | 2020-11-17 | 2020-11-17 | 70FF, 71FF, 72FF | 38d |
| 74 | 1.6 | **Tích hợp Xuất file** | 4d | 2020-11-25 | 2020-11-30 |  | 29d |
| 75 |  | Phân tích yêu cầu | 1d | 2020-11-25 | 2020-11-25 | 23 | 29d |
| 76 |  | Mapping BO | 3d | 2020-11-25 | 2020-11-27 | 75SS | 29d |
| 77 |  | Tạo service | 3d | 2020-11-25 | 2020-11-27 | 76SS | 29d |
| 78 |  | Test | 1d | 2020-11-30 | 2020-11-30 | 77, 76 | 29d |
| 79 |  | Hoàn thành | 0d | 2020-11-30 | 2020-11-30 | 75FF, 76FF, 77FF, 78FF | 29d |
| 80 | 1.7 | **Tích hợp database** | 16d | 2020-12-18 | 2021-01-08 |  | 0d |
| 81 |  | Phân tích yêu cầu sizing số service cần dùng | 3d | 2020-12-18 | 2020-12-22 | 66 | 0d |
| 82 |  | Viết service dùng chung (1 service) | 1d | 2020-12-23 | 2020-12-23 | 81 | 0d |
| 83 |  | Mapping data to service (8 function mapping/ngày) | 10d | 2020-12-24 | 2021-01-06 | 82 | 0d |
| 84 |  | Test full luồng gọi Database | 2d | 2021-01-07 | 2021-01-08 | 83 | 0d |
| 85 |  | Hoàn thành | 0d | 2021-01-08 | 2021-01-08 | 81FF, 82FF, 83FF, 84FF | 0d |

## Version 2 (saved 2020-11-12)

Note of the change: update WebLogPlan.mpp bk

Last finish stays 2021-01-08.

Added:

| ID | Task | Duration | Start | Finish | Predecessors |
| --- | --- | --- | --- | --- | --- |
| 67 | **Tích hợp** | 41d | 2020-11-13 | 2021-01-08 |  |
| 86 | Hoàn thành | 0d | 2021-01-08 | 2021-01-08 | 73, 79, 85 |

Changed:

| ID | Task | Start | Finish | Total float | Predecessors |
| --- | --- | --- | --- | --- | --- |
| 87 | Hoàn thành | 2020-12-17 → 2021-01-08 (+22d) | 2020-12-17 → 2021-01-08 (+22d) | 16d → 0d | 39FF, 66FF, 2 → 39FF, 66FF, 2, 86 |
